# 4662/4663 CFe拓展坞 DVT阶段

Schedule from a web Gantt chart, 2024-08-07 to 2024-11-13.
Saturdays and Sundays are off

## Schedule

| ID | WBS | Task | Duration | Start | Finish | Predecessors | Complete | inPeople | Status |
| --- | --- | --- | --- | --- | --- | --- | --- | --- | --- |
| 2 | 1 | 供应商完成样品预扫 | 1d | 2024-08-07 | 2024-08-07 |  | 100% | 供应商 | done |
| 3 | 2 | 打样第二版PCBＡ样品 | 13d | 2024-08-08 | 2024-08-26 | 2 |  | 供应商 |  |
| 4 | 3 | 样品质量验收测试 | 8d | 2024-08-27 | 2024-09-05 | 3 |  | 测试 | waiting |
| 5 | 4 | 电子料备料 | 14d | 2024-09-06 | 2024-09-25 | 4 |  | 供应商 | waiting |
| 6 | 5 | 外观评审 | 2d | 2024-08-27 | 2024-08-28 | 3 |  | 项目组 | waiting |
| 7 | 6 | 开模前样品评审 | 1d | 2024-08-29 | 2024-08-29 | 6 |  | 项目组 | waiting |
| 8 | 7 | 开模 T0 样 | 28d | 2024-08-30 | 2024-10-08 | 7 |  | 供应商 | waiting |
| 9 | 8 | PCBA贴片 T0 | 9d | 2024-09-26 | 2024-10-08 | 5 |  | 供应商 | waiting |
| 10 | 9 | 包装打样 | 5d | 2024-08-29 | 2024-09-04 | 19 |  | 包装 | waiting |
| 11 | 10 | 试产样 质量验收测试 | 4d | 2024-10-09 | 2024-10-14 | 8, 9 |  | 质量 | waiting |
| 12 | 11 | 产前样签样 | 1d | 2024-10-15 | 2024-10-15 | 11 |  | 项目组 | waiting |
| 13 | 12 | 包装完整样品签样 | 1d | 2024-10-16 | 2024-10-16 | 12 |  | 项目组 | waiting |
| 14 | 13 | 包装制作 | 6d | 2024-10-17 | 2024-10-24 | 13 |  | 包装 | waiting |
| 15 | 14 | 首批量产 | 11d | 2024-10-25 | 2024-11-08 | 14 |  | 供应商 | waiting |
| 16 | 15 | 成品入仓 | 3d | 2024-11-11 | 2024-11-13 | 15 |  | 项目 | waiting |
| 17 | 16 | 渲染需求 | 2d | 2024-08-12 | 2024-08-13 |  |  | 产品 |  |
| 18 | 17 | 完成主图拍摄渲染 | 4d | 2024-08-14 | 2024-08-19 | 17 |  | 渲染 | waiting |
| 19 | 18 | 包装设计 | 7d | 2024-08-20 | 2024-08-28 | 18 |  | 包装 | waiting |
| 20 | 19 | 输出定价定量资料 | 2d | 2024-09-02 | 2024-09-03 |  |  | 产品 |  |
| 21 | 20 | 完成定价审批 | 1d | 2024-09-04 | 2024-09-04 | 20 |  | 产品 | waiting |
| 22 | 21 | 各区域认证费用确认 | 1d | 2024-09-04 | 2024-09-04 |  |  | 认证 |  |
| 23 | 22 | 卖点宣讲会 | 1d | 2024-09-05 | 2024-09-05 | 21 |  | 产品 | waiting |
| 24 | 23 | 确认各区域销售ＭＯＱ | 1d | 2024-09-05 | 2024-09-05 | 22 |  | 销售 | waiting |
| 25 | 24 | 销售区域确认 | 1d | 2024-09-06 | 2024-09-06 | 23, 24 |  | 销售 | waiting |
| 26 | 25 | 产品中英文案 | 5d | 2024-08-30 | 2024-09-05 | 7 |  | 产品 | waiting |
| 27 | 26 | 中台信息录入 | 1d | 2024-09-06 | 2024-09-06 | 26 |  | 市场 | waiting |

Notes:
- 3: 8/15更新：10--->13工作日。
- 4: 8/15更新：2--->8工作日。
- 5: 8/15更新：由8/8开始更新为质量测试完成后，开始备料。10--->14工作日。
- 6: 8/15更新：新增
- 8: 8/15更新:11--->28工作日，由于国庆假期
- 9: 8/15更新：开始时间由9/13号，更新到电子备料完成后。10--->8工作日。
- 11: 8/15更新：质量测试时间4-->
